# Assignment#3

Schedule from MS Project, 2021-03-17 to 2021-05-13.

## Calendars

- Standard: Mon-Fri 08:00-12:00, 13:00-17:00; Sat-Sun off.

## Schedule

| ID | WBS | Task | Duration | Start | Finish | Predecessors | Total slack | Free slack |
| --- | --- | --- | --- | --- | --- | --- | --- | --- |
| 1 | 1 | **Project Assignment 3** | 42d | 2021-03-17 | 2021-05-13 |  | 0d |  |
| 2 | 1.1 | **Project Plan** | 4d | 2021-03-17 | 2021-03-22 |  | 0d |  |
| 3 | 1.1.1 | Write Plan | 1d | 2021-03-17 | 2021-03-17 |  | 0d |  |
| 4 | 1.1.2 | **Review Plan** | 2d | 2021-03-18 | 2021-03-19 | 3 | 0d |  |
| 5 | 1.1.2.1 | Preparation for review | 1d | 2021-03-18 | 2021-03-18 | 3 | 0d |  |
| 6 | 1.1.2.2 | Review meeting | 1d | 2021-03-19 | 2021-03-19 | 5 | 0d |  |
| 7 | 1.1.3 | Rework | 1d | 2021-03-22 | 2021-03-22 | 6 | 0d |  |
| 8 | 1.2 | **Documented Software Development Process Updates** | 4d | 2021-03-23 | 2021-03-26 | 7 | 0d |  |
| 9 | 1.2.1 | Process changes | 1d | 2021-03-23 | 2021-03-23 | 7 | 0d |  |
| 10 | 1.2.2 | **Review changes** | 2d | 2021-03-24 | 2021-03-25 | 9 | 0d |  |
| 11 | 1.2.2.1 | Preparation for review | 1d | 2021-03-24 | 2021-03-24 | 9 | 0d |  |
| 12 | 1.2.2.2 | Review Meeting | 1d | 2021-03-25 | 2021-03-25 | 11 | 0d |  |
| 13 | 1.2.3 | Rework | 1d | 2021-03-26 | 2021-03-26 | 12 | 0d |  |
| 14 | 1.3 | **Requirement** | 4d | 2021-03-29 | 2021-04-01 | 13 | 0d |  |
| 15 | 1.3.1 | Write requirements | 1d | 2021-03-29 | 2021-03-29 | 13 | 0d |  |
| 16 | 1.3.2 | **Review requirements** | 2d | 2021-03-30 | 2021-03-31 | 15 | 0d |  |
| 17 | 1.3.2.1 | Preparation for review | 1d | 2021-03-30 | 2021-03-30 | 15 | 0d |  |
| 18 | 1.3.2.2 | Review Meeting | 1d | 2021-03-31 | 2021-03-31 | 17 | 0d |  |
| 19 | 1.3.3 | Rework | 1d | 2021-04-01 | 2021-04-01 | 18 | 0d |  |
| 20 | 1.4 | **Build the development and testing lab environment** | 5d | 2021-03-23 | 2021-03-29 | 7 | 33d |  |
| 21 | 1.4.1 | **Hardware Environemnt** | 2d | 2021-03-23 | 2021-03-24 | 7 | 33d |  |
| 22 | 1.4.1.1 | Servers | 1d | 2021-03-23 | 2021-03-23 | 7 | 33d | 0d |
| 23 | 1.4.1.2 | Clients | 1d | 2021-03-24 | 2021-03-24 | 22 | 33d | 0d |
| 24 | 1.4.2 | **Software Development Tools** | 1d | 2021-03-25 | 2021-03-25 | 23 | 33d |  |
| 25 | 1.4.2.1 | Build/compile tools | 1d | 2021-03-25 | 2021-03-25 | 23 | 33d | 0d |

| ID | WBS | Task | Duration | Start | Finish | Predecessors | Total slack | Free slack |
| --- | --- | --- | --- | --- | --- | --- | --- | --- |
| 26 | 1.4.3 | **Software Testing Tools** | 2d | 2021-03-26 | 2021-03-29 | 25 | 33d |  |
| 27 | 1.4.3.1 | Test cases execution tools | 1d | 2021-03-26 | 2021-03-26 | 25 | 33d | 0d |
| 28 | 1.4.3.2 | simulation tools | 1d | 2021-03-29 | 2021-03-29 | 27 | 33d |  |
| 29 | 1.5 | **Analysis** | 4d | 2021-04-02 | 2021-04-07 | 19 | 0d |  |
| 30 | 1.5.1 | Write Analysis Document | 1d | 2021-04-02 | 2021-04-02 | 19 | 0d |  |
| 31 | 1.5.2 | **Review Analysis Document** | 2d | 2021-04-05 | 2021-04-06 | 30 | 0d |  |
| 32 | 1.5.2.1 | Preparation for Analysis Document | 1d | 2021-04-05 | 2021-04-05 | 30 | 0d |  |
| 33 | 1.5.2.2 | Review Meeting | 1d | 2021-04-06 | 2021-04-06 | 32 | 0d |  |
| 34 | 1.5.3 | Rework | 1d | 2021-04-07 | 2021-04-07 | 33 | 0d |  |
| 35 | 1.6 | **Design** | 8d | 2021-04-08 | 2021-04-19 | 34 | 0d |  |
| 36 | 1.6.1 | Write DD | 1d | 2021-04-08 | 2021-04-08 | 34 | 0d |  |
| 37 | 1.6.2 | **Review DD** | 2d | 2021-04-09 | 2021-04-12 | 36 | 0d |  |
| 38 | 1.6.2.1 | Preparation for DD | 1d | 2021-04-09 | 2021-04-09 | 36 | 0d |  |
| 39 | 1.6.2.2 | Review Meeting | 1d | 2021-04-12 | 2021-04-12 | 38 | 0d |  |
| 40 | 1.6.3 | Rework | 1d | 2021-04-13 | 2021-04-13 | 39 | 0d |  |
| 41 | 1.6.4 | Write Data model | 1d | 2021-04-14 | 2021-04-14 | 40 | 0d |  |
| 42 | 1.6.5 | **Review DM** | 2d | 2021-04-15 | 2021-04-16 | 41 | 0d |  |
| 43 | 1.6.5.1 | Preparation for DM | 1d | 2021-04-15 | 2021-04-15 | 41 | 0d |  |
| 44 | 1.6.5.2 | Review Meeting | 1d | 2021-04-16 | 2021-04-16 | 43 | 0d |  |
| 45 | 1.6.6 | Rework | 1d | 2021-04-19 | 2021-04-19 | 44 | 0d |  |
| 46 | 1.7 | **Coding** | 7d | 2021-04-20 | 2021-04-28 | 45 | 0d |  |
| 47 | 1.7.1 | Write code | 1d | 2021-04-20 | 2021-04-20 | 45 | 0d |  |
| 48 | 1.7.2 | **Unit testing** | 3d | 2021-04-21 | 2021-04-23 | 47 | 0d |  |
| 49 | 1.7.2.1 | Prepare/Execute test cases | 1d | 2021-04-21 | 2021-04-21 | 47 | 0d |  |
| 50 | 1.7.2.2 | Fix found defects | 1d | 2021-04-22 | 2021-04-22 | 49 | 0d |  |
| 51 | 1.7.2.3 | Test fixed defects | 1d | 2021-04-23 | 2021-04-23 | 50 | 0d |  |

| ID | WBS | Task | Duration | Start | Finish | Predecessors | Total slack |
| --- | --- | --- | --- | --- | --- | --- | --- |
| 52 | 1.7.3 | **Code inspection** | 3d | 2021-04-26 | 2021-04-28 | 51 | 0d |
| 53 | 1.7.3.1 | Preparation for code inspection | 1d | 2021-04-26 | 2021-04-26 | 51 | 0d |
| 54 | 1.7.3.2 | code inspection meeting | 1d | 2021-04-27 | 2021-04-27 | 53 | 0d |
| 55 | 1.7.3.3 | Rework | 1d | 2021-04-28 | 2021-04-28 | 54 | 0d |
| 56 | 1.8 | **Testing** | 7d | 2021-04-29 | 2021-05-07 | 19, 55 | 0d |
| 57 | 1.8.1 | Write test plan | 1d | 2021-04-29 | 2021-04-29 | 19 | 0d |
| 58 | 1.8.2 | **Review TP** | 3d | 2021-04-30 | 2021-05-04 | 57 | 0d |
| 59 | 1.8.2.1 | Preparation for TP | 1d | 2021-04-30 | 2021-04-30 | 57 | 0d |
| 60 | 1.8.2.2 | Review TP meeting | 1d | 2021-05-03 | 2021-05-03 | 59 | 0d |
| 61 | 1.8.2.3 | Rework | 1d | 2021-05-04 | 2021-05-04 | 60 | 0d |
| 62 | 1.8.3 | Execute TP (test cases) | 1d | 2021-05-05 | 2021-05-05 | 55, 61 | 0d |
| 63 | 1.8.4 | Fix found defects | 1d | 2021-05-06 | 2021-05-06 | 62 | 0d |
| 64 | 1.8.5 | Test fixed defects | 1d | 2021-05-07 | 2021-05-07 | 63 | 0d |
| 65 | 1.9 | **Documentation** | 4d | 2021-05-10 | 2021-05-13 | 19, 64 | 0d |
| 66 | 1.9.1 | User documentation | 1d | 2021-05-10 | 2021-05-10 | 19, 64 | 0d |
| 67 | 1.9.2 | **Review UD** | 3d | 2021-05-11 | 2021-05-13 | 66 | 0d |
| 68 | 1.9.2.1 | Preparation for UD Review | 1d | 2021-05-11 | 2021-05-11 | 66 | 0d |
| 69 | 1.9.2.2 | Review UD Meeting | 1d | 2021-05-12 | 2021-05-12 | 68 | 0d |
| 70 | 1.9.2.3 | Rework | 1d | 2021-05-13 | 2021-05-13 | 69 | 0d |
